# VideoProcessingCluster

Schedule from MS Project, 2022-01-27 to 2022-05-05, costs in CHF.

## Calendars

- Standard: Mon-Fri 09:00-13:00, 14:00-18:00; Sat-Sun off. Exceptions (off unless hours are given): 2022-01-27 to 2022-05-05 09:05-12:20, 13:15-16:30 (lavorativo, recurring), 2022-01-27 to 2022-05-05 (non lavorativo, recurring), 2022-03-03 (festa 1), 2022-04-21 (festa 2).

## Resources

| Resource |
| --- |
| SA |
| DC |
| GC |
| <Nuova risorsa> |

## Schedule

| ID | WBS | Task | Duration | Start | Finish | Predecessors | Baseline start | Baseline finish | Baseline duration | Baseline 1 start | Baseline 1 finish | Total slack | Free slack | Resources | Work | Cost | Baseline cost |
| --- | --- | --- | --- | --- | --- | --- | --- | --- | --- | --- | --- | --- | --- | --- | --- | --- | --- |
| 1 | 1 | **Video processing cluster** | 10.56d | 2022-01-27 09:05 | 2022-05-05 16:30 |  | 2022-01-27 09:05 | 2022-04-28 15:18 | 9.6d | 2022-01-27 09:05 | 2022-04-28 15:18 | 0d |  |  | 215.5h | 5,387.5 | 5,437.5 |
| 2 | 1.1 | **introduzione** | 1.31d | 2022-01-27 09:05 | 2022-02-03 14:00 |  | 2022-01-27 09:05 | 2022-02-03 14:00 | 1.31d | 2022-01-27 09:05 | 2022-02-03 14:00 | 1.5d |  |  | 31.5h | 787.5 | 787.5 |
| 3 | 1.1.1 | Analisi qdc | 2.5h | 2022-01-27 09:05 | 2022-01-27 11:35 |  | 2022-01-27 09:05 | 2022-01-27 11:35 | 2.5h | 2022-01-27 09:05 | 2022-01-27 11:35 | 1.5d | 0d | SA; DC; GC | 7.5h | 187.5 | 187.5 |
| 4 | 1.1.2 | Creazione del gantt consuntivo | 3h | 2022-01-27 11:35 | 2022-01-27 15:30 | 3 | 2022-01-27 11:35 | 2022-01-27 15:30 | 3h | 2022-01-27 11:35 | 2022-01-27 15:30 | 1.5d | 0d | SA; DC; GC | 9h | 225 | 225 |
| 5 | 1.1.3 | Creazione repository git-hub | 1h | 2022-01-27 15:30 | 2022-01-27 16:30 | 4 | 2022-01-27 15:30 | 2022-01-27 16:30 | 1h | 2022-01-27 15:30 | 2022-01-27 16:30 | 1.5d | 0d | SA; DC; GC | 3h | 75 | 75 |
| 6 | 1.1.4 | use-case | 2h | 2022-02-03 09:05 | 2022-02-03 11:05 | 5 | 2022-02-03 09:05 | 2022-02-03 11:05 | 2h | 2022-02-03 09:05 | 2022-02-03 11:05 | 1.5d | 0d | SA; DC; GC | 6h | 150 | 150 |
| 7 | 1.1.5 | test-case | 2h | 2022-02-03 11:05 | 2022-02-03 14:00 | 6 | 2022-02-03 11:05 | 2022-02-03 14:00 | 2h | 2022-02-03 11:05 | 2022-02-03 14:00 | 1.5d | 0d | SA; DC; GC | 6h | 150 | 150 |
| 8 | 1.2 | **progettazione** | 2d | 2022-02-03 14:00 | 2022-02-24 09:35 |  | 2022-02-03 14:00 | 2022-02-24 09:35 | 2d | 2022-02-03 14:00 | 2022-02-24 09:35 | 1.5d |  |  | 46h | 1,150 | 1,200 |
| 9 | 1.2.1 | Schema della rete | 4h | 2022-02-03 14:00 | 2022-02-10 10:35 | 7 | 2022-02-03 14:00 | 2022-02-10 10:35 | 4h | 2022-02-03 14:00 | 2022-02-10 10:35 | 1.5d | 0d | SA | 4h | 100 | 100 |
| 10 | 1.2.2 | GUI web | 4h | 2022-02-03 14:00 | 2022-02-10 10:35 | 7 | 2022-02-03 14:00 | 2022-02-10 10:35 | 4h | 2022-02-03 14:00 | 2022-02-10 10:35 | 1.5d | 0d | GC | 4h | 100 | 100 |
| 11 | 1.2.3 | Database | 4h | 2022-02-03 14:00 | 2022-02-10 10:35 | 7 | 2022-02-03 14:00 | 2022-02-10 10:35 | 4h | 2022-02-03 14:00 | 2022-02-10 10:35 | 1.5d | 0d | DC | 4h | 100 | 100 |
| 12 | 1.2.4 | Load balancer ricerca | 6h | 2022-02-10 10:35 | 2022-02-17 10:05 | 9, 10, 11 | 2022-02-10 10:35 | 2022-02-17 10:05 | 6h | 2022-02-10 10:35 | 2022-02-17 10:05 | 1.5d | 0d | SA; GC; DC | 18h | 450 | 450 |
| 13 | 1.2.5 | **Server 1 e 2 macchina virtuale** | 0.75d | 2022-02-17 10:05 | 2022-02-24 09:35 |  | 2022-02-17 10:05 | 2022-02-24 09:35 | 0.75d | 2022-02-17 10:05 | 2022-02-24 09:35 | 1.5d |  |  | 16h | 400 | 450 |
| 14 | 1.2.5.1 | gestione delle sessioni | 5h | 2022-02-17 10:05 | 2022-02-17 16:00 | 12 | 2022-02-17 10:05 | 2022-02-24 09:35 | 6h | 2022-02-17 10:05 | 2022-02-24 09:35 | 2.12d | 0.62d | GC | 5h | 125 | 150 |
| 15 | 1.2.5.2 | ricerca esecuzione in background dei video caricati | 5h | 2022-02-17 10:05 | 2022-02-17 16:00 | 12 | 2022-02-17 10:05 | 2022-02-24 09:35 | 6h | 2022-02-17 10:05 | 2022-02-24 09:35 | 2.12d | 0.62d | DC | 5h | 125 | 150 |
| 16 | 1.2.5.3 | come produrre statistiche sui frame | 3h | 2022-02-17 10:05 | 2022-02-17 14:00 | 12 | 2022-02-17 10:05 | 2022-02-17 14:00 | 3h | 2022-02-17 10:05 | 2022-02-17 14:00 | 1.5d | 0d | SA | 3h | 75 | 75 |
| 17 | 1.2.5.4 | come produrre un grafico con la frequenza dei frame | 3h | 2022-02-17 14:00 | 2022-02-24 09:35 | 16 | 2022-02-17 14:00 | 2022-02-24 09:35 | 3h | 2022-02-17 14:00 | 2022-02-24 09:35 | 1.5d | 0d | SA | 3h | 75 | 75 |
| 18 | 1.3 | **implementazione** | 3.25d | 2022-02-24 09:35 | 2022-03-31 09:35 |  | 2022-02-24 09:35 | 2022-03-31 09:35 | 3.25d | 2022-02-24 09:35 | 2022-03-31 09:35 | 1.5d |  |  | 78h | 1,950 | 1,950 |
| 19 | 1.3.1 | macchina virtuale Server 1 e 2 | 4h | 2022-02-24 09:35 | 2022-02-24 14:30 | 17 | 2022-02-24 09:35 | 2022-02-24 14:30 | 4h | 2022-02-24 09:35 | 2022-02-24 14:30 | 1.5d | 0d | DC | 4h | 100 | 100 |
| 20 | 1.3.2 | configurazione Server 1 e 2 | 10h | 2022-02-24 14:30 | 2022-03-17 10:35 | 19, 14, 15 | 2022-02-24 14:30 | 2022-03-17 10:35 | 10h | 2022-02-24 14:30 | 2022-03-17 10:35 | 1.5d | 0d | DC | 10h | 250 | 250 |
| 21 | 1.3.3 | macchina virtuale database | 4h | 2022-02-24 09:35 | 2022-02-24 14:30 | 17 | 2022-02-24 09:35 | 2022-02-24 14:30 | 4h | 2022-02-24 09:35 | 2022-02-24 14:30 | 1.5d | 0d | SA | 4h | 100 | 100 |
| 22 | 1.3.4 | configurazione database | 10h | 2022-02-24 14:30 | 2022-03-17 10:35 | 21 | 2022-02-24 14:30 | 2022-03-17 10:35 | 10h | 2022-02-24 14:30 | 2022-03-17 10:35 | 1.5d | 0d | SA | 10h | 250 | 250 |
| 23 | 1.3.5 | macchina virtuale load balancer | 4h | 2022-02-24 09:35 | 2022-02-24 14:30 | 17 | 2022-02-24 09:35 | 2022-02-24 14:30 | 4h | 2022-02-24 09:35 | 2022-02-24 14:30 | 1.5d | 0d | GC | 4h | 100 | 100 |
| 24 | 1.3.6 | configurazione load balancer | 10h | 2022-02-24 14:30 | 2022-03-17 10:35 | 23 | 2022-02-24 14:30 | 2022-03-17 10:35 | 10h | 2022-02-24 14:30 | 2022-03-17 10:35 | 1.5d | 0d | GC | 10h | 250 | 250 |

| ID | WBS | Task | Duration | Start | Finish | Predecessors | Baseline start | Baseline finish | Baseline duration | Baseline 1 start | Baseline 1 finish | Total slack | Free slack | Constraint | Resources | Work | Cost | Baseline cost |
| --- | --- | --- | --- | --- | --- | --- | --- | --- | --- | --- | --- | --- | --- | --- | --- | --- | --- | --- |
| 25 | 1.3.7 | **struttura web** | 1.5d | 2022-03-17 10:35 | 2022-03-31 09:35 |  | 2022-03-17 10:35 | 2022-03-31 09:35 | 1.5d | 2022-03-17 10:35 | 2022-03-31 09:35 | 1.5d |  |  |  | 36h | 900 | 900 |
| 26 | 1.3.7.1 | pagina principale | 8h | 2022-03-17 10:35 | 2022-03-24 12:05 | 24, 20, 22 | 2022-03-17 10:35 | 2022-03-24 12:05 | 8h | 2022-03-17 10:35 | 2022-03-24 12:05 | 1.5d | 0d |  | GC; DC; SA | 24h | 600 | 600 |
| 27 | 1.3.7.2 | pagina per statistiche e download | 4h | 2022-03-24 12:05 | 2022-03-31 09:35 | 26 | 2022-03-24 12:05 | 2022-03-31 09:35 | 4h | 2022-03-24 12:05 | 2022-03-31 09:35 | 1.5d | 0d |  | GC; DC; SA | 12h | 300 | 300 |
| 28 | 1.4 | **test** | 3.19d | 2022-03-31 09:35 | 2022-04-28 18:00 |  | 2022-03-31 09:35 | 2022-04-28 10:05 | 2.5d | 2022-03-31 09:35 | 2022-04-28 10:05 | 0.81d |  |  |  | 60h | 1,500 | 1,500 |
| 29 | 1.4.1 | funzionamento database | 4h | 2022-03-31 09:35 | 2022-03-31 14:30 | 27 | 2022-03-31 09:35 | 2022-03-31 14:30 | 4h | 2022-03-31 09:35 | 2022-03-31 14:30 | 1.5d | 0d |  | DC; GC; SA | 12h | 300 | 300 |
| 30 | 1.4.2 | funzionamento dei 2 server | 4h | 2022-03-31 14:30 | 2022-04-07 11:05 | 29 | 2022-03-31 14:30 | 2022-04-07 11:05 | 4h | 2022-03-31 14:30 | 2022-04-07 11:05 | 1.5d | 0d |  | DC; GC; SA | 12h | 300 | 300 |
| 31 | 1.4.3 | funzionamento load balancer | 4h | 2022-04-07 11:05 | 2022-04-07 16:00 | 30 | 2022-04-07 11:05 | 2022-04-07 16:00 | 4h | 2022-04-07 11:05 | 2022-04-07 16:00 | 1.5d | 0d |  | DC; GC; SA | 12h | 300 | 300 |
| 32 | 1.4.4 | funzionamento del sistema in generale | 4h | 2022-04-07 16:00 | 2022-04-14 13:30 | 31 | 2022-04-07 16:00 | 2022-04-14 13:30 | 4h | 2022-04-07 16:00 | 2022-04-14 13:30 | 1.5d | 0.69d |  | DC; GC; SA | 12h | 300 | 300 |
| 33 | 1.4.5 | funzionamento del sistema senza un server o con troppo carico | 4h | 2022-04-28 11:35 | 2022-04-28 18:00 | 32 | 2022-04-14 13:30 | 2022-04-28 10:05 | 4h | 2022-04-14 13:30 | 2022-04-28 10:05 | 0.81d |  | finish no earlier than 2022-04-28 18:00 | DC; GC; SA | 12h | 300 | 300 |
| 34 | 1.5 | Documentazione | 10.56d | 2022-01-27 09:05 | 2022-05-05 16:30 |  | 2022-01-27 09:05 | 2022-05-05 18:00 | 9.6d | 2022-01-27 09:05 | 2022-04-28 15:18 | 0d |  | start no earlier than 2022-01-27 09:00 |  |  |  |  |
